# imcloud公有云第二阶段开发计划

Schedule from MS Project, 2019-07-15 to 2019-12-27, A marks actual dates.

## Calendars

- 标准: Mon-Fri 08:00-12:00, 13:00-17:00; Sat-Sun off. Exceptions (off unless hours are given): 2019-09-13 (中秋节), 2019-09-29 08:00-12:00, 13:00-17:00 (工作日), 2019-10-01 to 2019-10-04 (国庆节), 2019-10-07 (国庆节), 2019-10-12 08:00-12:00, 13:00-17:00 (工作日).

## Resources

| Resource |
| --- |
| 席晔文 |
| 习云芳 |
| 钟波 |
| 李文静 |
| 孙杨寸 |
| 聂军 |
| 李斌 |
| 李浩 |
| 刘星 |
| 顾勇 |
| 邓皓 |
| 周凡 |
| 张璧 |

## Schedule

| ID | WBS | Task | Type | Duration | Start | Finish | Predecessors | Complete | Remaining | Actual start | Total slack | Resources | Work | Actual work | 输出物 |
| --- | --- | --- | --- | --- | --- | --- | --- | --- | --- | --- | --- | --- | --- | --- | --- |
| 1 | 1 | **Imcloud公有云** |  | 116d? | 2019-07-15 A | 2019-12-27 |  | 38% | 71.37d? |  | 0d |  | 3133.6h | 1163.6h |  |
| 2 | 1.1 | **需求编写** |  | 45d | 2019-07-15 A | 2019-09-16 A |  | 100% |  |  |  |  | 128h | 128h |  |
| 3 | 1.1.1 | 功能模块需求跟踪矩阵 | manual | 5d | 2019-07-15 A | 2019-07-19 A |  | 100% |  |  |  | 邓皓 | 40h | 40h | 需求跟踪矩阵 |
| 4 | 1.1.2 | 设备通信接口 | manual | 6d | 2019-07-22 A | 2019-07-29 A | 3 | 100% |  |  |  | 邓皓 | 48h | 48h | 公有云设备通信接口文档 |
| 5 | 1.1.3 | Portal认证流程 | manual | 5d | 2019-09-09 A | 2019-09-16 A |  | 100% |  |  |  | 邓皓 | 40h | 40h | Portal认证需求文档 |
| 6 | 1.2 | **云端服务** |  | 22d | 2019-09-09 A | 2019-10-14 |  | 75% | 5.42d |  | 0d |  | 992h | 740h |  |
| 7 | 1.2.1 | **3.设备管理** |  | 16d | 2019-09-09 A | 2019-09-30 |  | 87% | 2.03d |  |  |  | 240h | 209.6h |  |
| 8 | 1.2.1.1 | 3.1设备发现服务端 | manual | 2d | 2019-09-11 A | 2019-09-12 A |  | 100% |  |  |  | 席晔文 | 16h | 16h | 自测报告_设备发现_后端.xlsx |
| 9 | 1.2.1.2 | 3.2设备上线服务端MQTT | manual | 2d | 2019-09-16 A | 2019-09-17 |  | 80% | 0.4d |  |  | 席晔文 | 16h | 12.8h |  |
| 10 | 1.2.1.3 | 3.3AP管理前端 | manual | 6d | 2019-09-12 A | 2019-09-20 |  | 90% | 0.6d |  |  | 习云芳 | 48h | 43.2h | 等待对接接口 |
| 11 | 1.2.1.4 | 3.3AP管理服务端 | manual | 7d | 2019-09-18 A | 2019-09-26 | 13 | 80% | 1.4d |  |  | 钟波 | 56h | 44.8h |  |
| 12 | 1.2.1.5 | 3.4AC管理前端 | manual | 3d | 2019-09-09 A | 2019-09-11 |  | 90% | 0.3d |  |  | 习云芳 | 24h | 21.6h | 等待对接接口 |
| 13 | 1.2.1.6 | 3.4AC管理服务端 | manual | 4d | 2019-09-11 A | 2019-09-17 |  | 95% | 0.2d |  |  | 钟波 | 32h | 30.4h | 自测报告_钟波.xlsx |
| 14 | 1.2.1.7 | 3.6DCME管理前端 | manual | 3d | 2019-09-23 A | 2019-09-25 | 10 | 80% | 0.6d |  |  | 习云芳 | 24h | 19.2h | 在对接接口 |
| 15 | 1.2.1.8 | 3.6DCME管理服务端 | manual | 3d | 2019-09-27 A | 2019-09-30 | 11 | 90% | 0.3d |  |  | 钟波 | 24h | 21.6h |  |
| 16 | 1.2.2 | **4.网络配置** |  | 12d | 2019-09-11 A | 2019-09-27 |  | 70% | 3.55d |  |  |  | 208h | 146.4h |  |
| 17 | 1.2.2.1 | 4.1无线网络配置前端 | manual | 4d | 2019-09-11 A | 2019-09-17 |  | 95% | 0.2d |  |  | 李文静 | 32h | 30.4h |  |
| 18 | 1.2.2.2 | 4.1无线网络配置服务端 | manual | 5d | 2019-09-11 A | 2019-09-18 |  | 80% | 1d |  |  | 孙杨寸 | 40h | 32h | 自测报告_网络配置.xlsx |
| 19 | 1.2.2.3 | **4.3认证配置** |  | 9d | 2019-09-17 | 2019-09-27 |  | 88% | 1.12d | 2019-09-18 |  |  | 96h | 84h |  |
| 20 | 1.2.2.3.1 | 4.3.1认证策略设置前端 | manual | 5d | 2019-09-18 A | 2019-09-24 | 17 | 90% | 0.5d |  |  | 李文静 | 40h | 36h |  |
| 21 | 1.2.2.3.2 | 4.3.1认证策略设置服务端 | manual | 4d | 2019-09-18 A | 2019-09-23 |  | 80% | 0.8d |  |  | 席晔文 | 32h | 25.6h | 自测报告_认证策略_后端 .xlsx |
| 22 | 1.2.2.3.3 | 4.3.4微信/短信设置前端 | manual | 2d | 2019-09-25 A | 2019-09-26 | 20 | 90% | 0.2d |  |  | 李文静 | 16h | 14.4h |  |
| 23 | 1.2.2.3.4 | 4.3.4微信/短信设置服务端 | manual | 1d | 2019-09-24 A | 2019-09-24 A |  | 100% |  |  |  | 席晔文 | 8h | 8h | 自测报告_短信微信配置_后端.xlsx |
| 24 | 1.2.2.4 | 4.4Portal认证页面缓存到设备 | manual | 5d | 2019-09-23 | 2019-09-27 |  |  |  |  |  | 聂军 | 40h |  |  |

Notes:
- 9: 还差上报下发
- 11: AP完成80%，目前在与前端联调，剩余20%主要是与上报下发接口对接部分
- 13: AC完成85%，剩余15%主要是与上报下发接口对接部分
- 17: 网络配置这一块 和别的 有联动 数据前后是 接通了 但是有的地方还没数据
- 18: 无线网络配置下发接口还没定，测的数据校验，数据库存储等逻辑
- 20: 网络策略都接通了 但是图片存在跨域问题 还有就是有前后台调控还有点问题 另外预览的东西 准备和portal一起弄
- 21: 还差上报下发
- 22: 9月26日完成

| ID | WBS | Task | Type | Duration | Start | Finish | Predecessors | Complete | Remaining | Actual start | Total slack | Free slack | Constraint | Resources | Work | Actual work | 输出物 |
| --- | --- | --- | --- | --- | --- | --- | --- | --- | --- | --- | --- | --- | --- | --- | --- | --- | --- |
| 25 | 1.2.3 | **5.用户Portal认证** |  | 18d | 2019-09-16 A | 2019-10-14 |  | 69% | 5.67d |  | 0d |  |  |  | 312h | 212.8h |  |
| 26 | 1.2.3.1 | 5.1账号认证5.2海报认证 （扫码认证）5.3短信认证5.4一键认证5.6微信公众号菜单认证5.7微信验证码认证5.9第三方Portal认证前端 | manual | 9d | 2019-09-27 A | 2019-10-14 | 22 | 80% | 1.8d |  |  |  |  | 李文静 | 72h | 57.6h |  |
| 27 | 1.2.3.2 | 5.1账号认证服务端 | manual | 3d | 2019-09-16 A | 2019-09-18 |  | 90% | 0.3d |  |  |  |  | 李斌; 顾勇 | 48h | 43.2h | 自测报告_portal认证_后端.xlsx |
| 28 | 1.2.3.3 | 5.2海报认证 （扫码认证）服务端 | manual | 3d | 2019-09-19 | 2019-09-23 |  |  |  |  |  |  |  | 李斌; 顾勇 | 48h |  |  |
| 29 | 1.2.3.4 | 5.3短信认证服务端 | manual | 3d | 2019-09-24 A | 2019-09-26 |  | 90% | 0.3d |  |  |  |  | 李斌; 顾勇 | 48h | 43.2h | 自测报告_portal认证_后端.xlsx |
| 30 | 1.2.3.5 | 5.4一键认证服务端 | manual | 3d | 2019-09-27 A | 2019-09-30 |  | 90% | 0.3d |  |  |  |  | 李斌; 顾勇 | 48h | 43.2h | 自测报告_portal认证_后端.xlsx |
| 31 | 1.2.3.6 | 5.6微信公众号菜单认证服务端 | manual | 2d | 2019-10-08 A | 2019-10-09 |  | 80% | 0.4d |  |  |  |  | 李斌 | 16h | 12.8h |  |
| 32 | 1.2.3.7 | 5.7微信验证码认证服务端 | manual | 2d | 2019-10-10 A | 2019-10-11 |  | 80% | 0.4d |  |  |  |  | 李斌 | 16h | 12.8h |  |
| 33 | 1.2.3.8 | 5.9第三方Portal认证服务端 | manual | 2d | 2019-10-12 | 2019-10-14 |  |  |  |  |  |  |  | 李斌 | 16h |  |  |
| 34 | 1.2.4 | **6.状态与监控** |  | 11d | 2019-09-18 | 2019-10-08 |  | 97% | 0.33d | 2019-09-19 |  |  |  |  | 80h | 77.6h |  |
| 35 | 1.2.4.1 | 6.1网络设备概况前端 | manual | 3d | 2019-09-26 A | 2019-09-29 A | 14 | 100% |  |  |  |  |  | 习云芳 | 24h | 24h |  |
| 36 | 1.2.4.2 | 6.1网络设备概况服务端 | manual | 2d | 2019-09-19 A | 2019-09-20 A | 18 | 100% |  |  |  |  |  | 孙杨寸 | 16h | 16h | 自测报告_网络状况.xlsx |
| 37 | 1.2.4.3 | 6.3日志管理前端 | manual | 3d | 2019-09-24 A | 2019-09-26 |  | 90% | 0.3d |  |  |  |  | 习云芳 | 24h | 21.6h | 等待对接接口 |
| 38 | 1.2.4.4 | 6.3日志管理服务端 | manual | 2d | 2019-09-30 A | 2019-10-08 A | 35 | 100% |  |  |  |  |  | 孙杨寸 | 16h | 16h | 自测报告_日志查询.xlsx |
| 39 | 1.2.5 | **统计分析** |  | 2d | 2019-10-09 A | 2019-10-10 |  | 33% | 1.33d |  | 0d |  |  |  | 24h | 8h |  |
| 40 | 1.2.5.1 | 在线用户列表服务端 | manual | 2d | 2019-10-09 A | 2019-10-10 |  | 50% | 1d |  |  |  |  | 孙杨寸 | 16h | 8h |  |
| 41 | 1.2.5.2 | 在线用户列表前端 | manual | 1d | 2019-10-09 | 2019-10-09 |  |  |  |  |  |  |  | 习云芳 | 8h |  |  |
| 42 | 1.2.6 | **服务框架** |  | 1d | 2019-10-14 | 2019-10-14 |  |  |  |  | 0d |  |  |  | 16h |  |  |
| 43 | 1.2.6.1 | 任务下发列表服务端 | manual | 1d | 2019-10-14 | 2019-10-14 |  |  |  |  |  |  |  | 孙杨寸 | 8h |  |  |
| 44 | 1.2.6.2 | 任务下发列表前端 | manual | 1d | 2019-10-14 | 2019-10-14 |  |  |  |  |  |  |  | 习云芳 | 8h |  |  |
| 45 | 1.2.7 | 数据上报 下发和Portal框架移植 | manual | 2d | 2019-09-16 A | 2019-09-17 A |  | 100% |  |  |  |  |  | 聂军 | 16h | 16h |  |
| 46 | 1.2.8 | 数据库设计 | manual | 2d | 2019-09-10 A | 2019-09-11 |  | 85% | 0.3d |  |  |  |  | 聂军 | 16h | 13.6h |  |
| 47 | 1.2.9 | 数据上报下发 | manual | 10d | 2019-09-25 A | 2019-10-12 |  | 70% | 3d |  |  |  |  | 席晔文 | 80h | 56h |  |
| 48 | 1.3 | **AC** |  | 20d? | 2019-09-09 A | 2019-10-12 |  | 52% | 9.6d? |  | 0d |  |  |  | 320h | 166.4h |  |
| 49 | 1.3.1 | **二级AC开发** |  | 15d? | 2019-09-09 A | 2019-09-30 |  | 69% | 4.6d? |  | 0d |  |  |  | 240h | 166.4h |  |
| 50 | 1.3.1.1 | **二级AC注册公有云** |  | 7d? | 2019-09-09 A | 2019-09-19 |  | 90% | 0.7d? |  | 0d |  |  | 李浩 | 56h | 50.4h |  |
| 51 | 1.3.1.1.1 | 二级AC访问公有云url |  | 3d | 2019-09-09 A | 2019-09-12 |  | 90% | 0.3d |  | 1.8d | 0d | start no earlier than 2019-09-09 |  |  |  |  |
| 52 | 1.3.1.1.2 | 二级AC接收并提取公有云回复的注册url |  | 2d? | 2019-09-12 A | 2019-09-17 | 51 | 90% | 0.2d? |  | 1.8d | 0d |  |  |  |  |  |
| 53 | 1.3.1.1.3 | 二级AC解析注册url，建立MQTT连接 |  | 2d? | 2019-09-17 A | 2019-09-19 | 52 | 90% | 0.2d? |  | 0d |  |  |  |  |  |  |

Notes:
- 26: 二维码的链接还不知道具体的是生成什么样的链接
- 40: 新增任务
- 41: 新增任务
- 43: 新增任务
- 44: 新增任务
- 51: 功能已开发完，无环境测试
- 52: 功能已开发完，无环境测试
- 53: 功能已开发完，无环境测试

| ID | WBS | Task | Type | Duration | Start | Finish | Predecessors | Complete | Remaining | Total slack | Free slack | Constraint | Resources | Work | Actual work |
| --- | --- | --- | --- | --- | --- | --- | --- | --- | --- | --- | --- | --- | --- | --- | --- |
| 54 | 1.3.1.2 | **二级AC首次配置下发** |  | 8d? | 2019-09-19 A | 2019-09-30 | 50 | 44% | 4.5d? | 0d |  |  | 李浩 | 64h | 28h |
| 55 | 1.3.1.2.1 | 二级AC首次连接清空配置 |  | 3d | 2019-09-19 A | 2019-09-24 A | 53 | 100% |  |  |  |  |  |  |  |
| 56 | 1.3.1.2.2 | 二级AC接收整体配置并解析生效 |  | 5d? | 2019-09-24 A | 2019-09-30 | 55 | 10% | 4.5d? | 0d |  |  |  |  |  |
| 57 | 1.3.1.3 | **二级AC接口调整** |  | 15d | 2019-09-09 A | 2019-09-30 |  | 73% | 4d | 0d |  |  | 刘星 | 120h | 88h |
| 58 | 1.3.1.3.1 | 公共接口实现 |  | 10d | 2019-09-09 A | 2019-09-24 |  | 70% | 3d | 4d | 0d | start no earlier than 2019-09-09 |  |  |  |
| 59 | 1.3.1.3.2 | 二级AC专有通信接口 |  | 5d | 2019-09-24 A | 2019-09-30 | 58 | 80% | 1d | 0d |  |  |  |  |  |
| 60 | 1.3.2 | **二级AC自测** |  | 5d | 2019-09-30 | 2019-10-12 | 49 |  |  |  |  |  |  | 80h |  |
| 61 | 1.3.2.1 | 二级AC注册公有云自测 |  | 3d | 2019-09-30 | 2019-10-10 | 56 |  |  | 0d |  |  | 李浩 | 24h |  |
| 62 | 1.3.2.2 | 二级AC上线配置下发自测 |  | 2d | 2019-10-10 | 2019-10-12 | 61 |  |  | 0d |  |  | 李浩 | 16h |  |
| 63 | 1.3.2.3 | 二级AC接口自测 |  | 5d | 2019-09-30 | 2019-10-12 | 59 |  |  | 0d |  |  | 刘星 | 40h |  |
| 64 | 1.4 | **DCME** |  | 57d | 2019-08-05 A | 2019-10-28 |  | 20% | 45.35d | 0d |  |  |  | 581.6h | 129.2h |
| 65 | 1.4.1 | **开发** |  | 48d | 2019-08-05 A | 2019-10-15 |  | 26% | 35.29d | 0d |  |  |  | 488h | 129.2h |
| 66 | 1.4.1.1 | mqtt、json、xml、设备配置、信息熟悉等先期工作 | manual | 23d | 2019-08-05 | 2019-09-04 |  |  |  |  |  |  | 周凡 | 184h |  |
| 67 | 1.4.1.2 | 代码基础结构，包含多线程、mqtt数据发送接收等 | manual | 6d | 2019-09-05 A | 2019-09-12 |  | 85% | 0.9d |  |  |  | 张璧 | 48h | 40.8h |
| 68 | 1.4.1.3 | 时钟同步、设备重新发现，定时更新 | manual | 6d | 2019-09-05 A | 2019-09-12 |  | 85% | 0.9d |  |  |  | 周凡 | 48h | 40.8h |
| 69 | 1.4.1.4 | 配置文件同步，无线网络配置下发 | manual | 5d | 2019-09-16 | 2019-09-20 |  |  |  |  |  |  | 周凡 | 40h |  |
| 70 | 1.4.1.5 | 设备发现，心跳，认证 | manual | 7d | 2019-09-16 A | 2019-09-24 |  | 85% | 1.05d |  |  |  | 张璧 | 56h | 47.6h |
| 71 | 1.4.1.6 | DCME上线、定时上报、ap定时上报、shell命令执行等 | manual | 7d | 2019-09-23 | 2019-09-30 |  |  |  |  |  |  | 周凡 | 56h |  |
| 72 | 1.4.1.7 | 自测所有功能点 | manual | 7d | 2019-10-08 | 2019-10-15 |  |  |  |  |  |  | 周凡 | 56h |  |
| 73 | 1.4.2 | **联调** |  | 9d | 2019-10-16 | 2019-10-28 |  |  |  | 0d |  |  |  | 93.6h |  |
| 74 | 1.4.2.1 | 设备发现和上线 | manual | 2d | 2019-10-16 | 2019-10-17 |  |  |  |  |  |  | 周凡 | 16h |  |
| 75 | 1.4.2.2 | 上报和配置下发 | manual | 4d | 2019-10-18 | 2019-10-23 |  |  |  |  |  |  | 周凡 | 32h |  |
| 76 | 1.4.2.3 | portal联调 | manual | 3d | 2019-10-24 | 2019-10-28 |  |  |  |  |  |  | 周凡 | 24h |  |
| 77 | 1.4.2.4 | 张璧协同配合周凡 | manual | 9d | 2019-10-16 | 2019-10-28 |  |  |  |  |  |  | 张璧 [30%] | 21.6h |  |

Notes:
- 55: 处理售后的bug还有售后的版本，耽误了时间投入
- 67: 基本都做完了。就是文档有一些修改，有一些要改
- 68: 基本都做完了。就是文档有一些修改，有一些要改
- 70: 基本都做完了。就是文档有一些修改，有一些要改

| ID | WBS | Task | Type | Duration | Start | Finish | Predecessors | Total slack | Resources | Work |
| --- | --- | --- | --- | --- | --- | --- | --- | --- | --- | --- |
| 78 | 1.5 | **集成联调** |  | 11d | 2019-10-14 | 2019-10-28 |  |  |  | 364h |
| 79 | 1.5.1 | **二级AC联调** |  | 10d | 2019-10-15 | 2019-10-28 |  | 0d |  | 296h |
| 80 | 1.5.1.1 | 设备发现和上线联调 | manual | 2d | 2019-10-15 | 2019-10-16 |  |  | 席晔文 [50%]; 李文静; 李浩 | 40h |
| 81 | 1.5.1.2 | 设备信息上报和配置下发联调 | manual | 3d | 2019-10-17 | 2019-10-21 |  |  | 李文静; 席晔文 [50%]; 李浩 | 60h |
| 82 | 1.5.1.3 | 无线网络配置下发联调 | manual | 2d | 2019-10-22 | 2019-10-23 |  |  | 李浩; 李文静; 席晔文 [50%] | 40h |
| 83 | 1.5.1.4 | 认证策略下发联调 | manual | 3d | 2019-10-24 | 2019-10-28 |  |  | 李浩; 李文静; 席晔文 [50%] | 60h |
| 84 | 1.5.1.5 | Portal联调 | manual | 6d | 2019-10-15 | 2019-10-22 |  |  | 李斌; 刘星 | 96h |
| 85 | 1.5.2 | **DCME联调** |  | 9d | 2019-10-16 | 2019-10-28 |  | 0d |  | 68h |
| 86 | 1.5.2.1 | 设备发现和上线 | manual | 2d | 2019-10-16 | 2019-10-17 |  |  | 席晔文 [50%] | 8h |
| 87 | 1.5.2.2 | 上报和配置下发 | manual | 7d | 2019-10-18 | 2019-10-28 |  |  | 席晔文 [50%] | 28h |
| 88 | 1.5.2.3 | Portal联调 | manual | 4d | 2019-10-23 | 2019-10-28 |  |  | 李斌 | 32h |
| 89 | 1.6 | **集成自测** |  | 9d | 2019-10-29 | 2019-11-08 | 78 |  |  | 468h |
| 90 | 1.6.1 | **自模块测试** |  | 5d | 2019-10-29 | 2019-11-04 |  | 0d |  | 276h |
| 91 | 1.6.1.1 | 日志管理和网络概述 | manual | 5d | 2019-10-29 | 2019-11-04 |  |  | 孙杨寸 [50%]; 李文静 [50%] | 40h |
| 92 | 1.6.1.2 | 设备管理 | manual | 5d | 2019-10-29 | 2019-11-04 |  |  | 习云芳; 钟波 [50%]; 席晔文 [30%] | 72h |
| 93 | 1.6.1.3 | Portal认证 | manual | 5d | 2019-10-29 | 2019-11-04 |  |  | 李斌; 顾勇 | 80h |
| 94 | 1.6.1.4 | 认证策略配置 | manual | 5d | 2019-10-29 | 2019-11-04 |  |  | 李文静 [50%]; 席晔文 [30%]; 钟波 [50%] | 52h |
| 95 | 1.6.1.5 | 无线网络配置 | manual | 5d | 2019-10-29 | 2019-11-04 |  |  | 席晔文 [30%]; 孙杨寸 [50%] | 32h |
| 96 | 1.6.2 | **交叉测试** |  | 4d | 2019-11-05 | 2019-11-08 |  | 0d |  | 192h |
| 97 | 1.6.2.1 | 日志管理和网络概述 | manual | 4d | 2019-11-05 | 2019-11-08 |  |  | 李文静 [50%]; 钟波 [50%] | 32h |
| 98 | 1.6.2.2 | 设备管理 | manual | 4d | 2019-11-05 | 2019-11-08 |  |  | 习云芳 [50%]; 席晔文 [50%] | 32h |
| 99 | 1.6.2.3 | Portal认证 | manual | 4d | 2019-11-05 | 2019-11-08 |  |  | 李斌; 顾勇 | 64h |
| 100 | 1.6.2.4 | 认证策略配置 | manual | 4d | 2019-11-05 | 2019-11-08 |  |  | 孙杨寸 [50%]; 习云芳 [50%] | 32h |
| 101 | 1.6.2.5 | 无线网络配置 | manual | 4d | 2019-11-05 | 2019-11-08 |  |  | 李文静 [50%]; 钟波 [50%] | 32h |
| 102 | 1.7 | 发布测试版本（tr4） | manual | 1d? | 2019-11-11 | 2019-11-11 | 89 |  |  |  |

| ID | WBS | Task | Type | Duration | Start | Finish | Predecessors | Total slack | Resources | Work | 输出物 |
| --- | --- | --- | --- | --- | --- | --- | --- | --- | --- | --- | --- |
| 103 | 1.8 | **功能测试** |  | 15d | 2019-11-11 | 2019-11-29 |  |  |  | 120h |  |
| 104 | 1.8.1 | 设备管理 | manual | 3d | 2019-11-11 | 2019-11-13 |  |  | 邓皓 | 24h |  |
| 105 | 1.8.2 | 无线网络配置 | manual | 2d | 2019-11-14 | 2019-11-15 | 104 |  | 邓皓 | 16h |  |
| 106 | 1.8.3 | 认证策略配置 | manual | 2d | 2019-11-18 | 2019-11-19 | 105 |  | 邓皓 | 16h |  |
| 107 | 1.8.4 | Portal认证 | manual | 6d | 2019-11-20 | 2019-11-27 | 106 |  | 邓皓 | 48h |  |
| 108 | 1.8.5 | 状态与监控 | manual | 2d | 2019-11-28 | 2019-11-29 | 107 |  | 邓皓 | 16h | 第一轮功能测试报告 |
| 109 | 1.9 | **集成测试** |  | 16d | 2019-12-02 | 2019-12-23 |  | 0d |  | 80h |  |
| 110 | 1.9.1 | 第一轮集成测试 | manual | 5d | 2019-12-02 | 2019-12-06 |  |  | 邓皓 | 40h | 第一轮集成测试报告 |
| 111 | 1.9.2 | 第二轮集成测试 | manual | 5d | 2019-12-17 | 2019-12-23 | 112 |  | 邓皓 | 40h | 第二轮集成测试报告 |
| 112 | 1.10 | 性能测试 | manual | 6d | 2019-12-09 | 2019-12-16 | 110 |  | 邓皓 | 48h | 性能测试报告 |
| 113 | 1.11 | 确认测试 | manual | 3d | 2019-12-24 | 2019-12-26 | 111 |  | 邓皓 | 24h | 确认测试报告 |
| 114 | 1.12 | 产品发布 | manual | 1d | 2019-12-27 | 2019-12-27 | 113 |  | 邓皓 | 8h |  |
